# 需求工程甘特图

Schedule from MS Project, 2017-09-28 to 2018-01-17, 2 hours a day, costs in ¥, A marks actual dates.
user

## Calendars

- G23的日历: Mon-Sun 08:00-10:00.

## Resources

| Resource | Rate |
| --- | --- |
| 仲叶 | 30.97 |
| 汪涛 | 30.97 |
| 史晨鑫 | 30.97 |
| 任剑超 | 30.97 |
| 邱英凡 | 30.97 |

## Schedule

| ID | WBS | Task | Type | Duration | Start | Finish | Predecessors | Complete | Remaining | Actual start | Actual finish | Total slack | Resources | Work | Actual work | Cost | Actual cost |
| --- | --- | --- | --- | --- | --- | --- | --- | --- | --- | --- | --- | --- | --- | --- | --- | --- | --- |
| 1 | 1 | **准备阶段** |  | 34.5d | 2017-09-28 A | 2017-10-28 |  | 100% |  |  | 2017-10-24 |  |  | 159h | 159h | 4,924.23 | 4,924.23 |
| 2 | 1.1 | 团队成立 | milestone, manual | 0d | 2017-09-28 A | 2017-09-28 A |  | 100% |  |  |  |  |  |  |  |  |  |
| 3 | 1.2 | 小组会议 | milestone, manual | 0d | 2017-09-28 A | 2017-09-28 A |  | 100% |  |  |  |  |  |  |  |  |  |
| 4 | 1.3 | 软件安装 | milestone, manual | 0d | 2017-09-29 A | 2017-09-29 A | 2 | 100% |  |  |  |  |  |  |  |  |  |
| 5 | 1.4 | 搜集文档模板 | manual | 12d | 2017-09-29 A | 2017-10-10 A | 2 | 100% |  |  |  |  | 任剑超 | 24h | 24h | 743.28 | 743.28 |
| 6 | 1.5 | 可行性分析 | manual | 12.5d | 2017-10-11 A | 2017-10-23 A | 5 | 100% |  |  |  |  | 邱英凡; 任剑超; 史晨鑫; 汪涛; 仲叶 | 125h | 125h | 3,871.25 | 3,871.25 |
| 7 | 1.6 | 项目总体计划 | manual | 1d | 2017-10-23 A | 2017-10-24 A | 6 | 100% |  |  |  |  | 邱英凡; 任剑超; 史晨鑫; 汪涛; 仲叶 | 10h | 10h | 309.7 | 309.7 |
| 8 | 2 | **计划阶段** |  | 6.5d | 2017-10-25 A | 2017-10-28 |  | 84% | 1.04d |  |  |  |  | 22h | 22h | 681.34 | 681.34 |
| 9 | 2.1 | wbs初稿 | manual | 1d | 2017-10-25 A | 2017-10-25 |  | 20% | 0.8d |  |  |  |  |  |  |  |  |
| 10 | 2.2 | 项目章程 | manual | 1d | 2017-10-25 A | 2017-10-25 A | 7 | 100% |  |  |  |  | 史晨鑫; 汪涛 | 4h | 4h | 123.88 | 123.88 |
| 11 | 2.3 | 需求工程项目计划 | manual | 3d | 2017-10-26 A | 2017-10-28 A | 10 | 100% |  |  |  |  | 史晨鑫; 汪涛; 仲叶 | 18h | 18h | 557.46 | 557.46 |
| 12 | 3 | **执行阶段** |  | 51d | 2017-11-01 | 2017-12-21 |  | 1% | 50.67d | 2017-11-02 |  |  |  | 143.2h |  | 4,434.9 |  |
| 13 | 3.1 | **需求工程** |  | 54.5d | 2017-11-01 | 2017-12-21 |  | 1% | 54.15d | 2017-11-02 |  |  |  | 143.2h |  | 4,434.9 |  |
| 14 | 3.1.1 | 小组会议 | milestone, manual | 0d | 2017-11-02 A | 2017-11-02 A |  | 100% |  |  |  |  |  |  |  |  |  |
| 15 | 3.1.2 | **需求获取** |  | 21d | 2017-11-03 A | 2017-11-23 |  | 1% | 20.81d |  |  |  |  | 88.2h |  | 2,731.55 |  |
| 16 | 3.1.2.1 | 小组会议 | manual | 1d | 2017-11-03 A | 2017-11-03 A |  | 100% |  |  |  |  |  |  |  |  |  |
| 17 | 3.1.2.2 | 定义愿景和范围 | manual | 8d | 2017-11-03 | 2017-11-10 | 10 |  |  |  |  |  | 邱英凡 [20%]; 任剑超 [20%] | 6.4h |  | 198.21 |  |
| 18 | 3.1.2.3 | 小组会议 | manual | 1d | 2017-11-08 | 2017-11-08 |  |  |  |  |  |  |  |  |  |  |  |
| 19 | 3.1.2.4 | 识别用户群、选择产品代言人 |  | 65d | 2017-11-11 | 2018-01-14 | 17 |  |  |  |  | 3d | 史晨鑫 [20%]; 汪涛 [20%] | 52h |  | 1,610.44 |  |
| 20 | 3.1.2.5 | 小组会议 | manual | 1d | 2017-11-07 | 2017-11-07 |  |  |  |  |  |  |  |  |  |  |  |
| 21 | 3.1.2.6 | 组织焦点小组 | manual | 4d | 2017-11-08 | 2017-11-11 | 17 |  |  |  |  |  | 邱英凡 [20%]; 仲叶 [20%] | 3h |  | 92.91 |  |
| 22 | 3.1.2.7 | 小组会议 | milestone, manual | 0d | 2017-11-08 | 2017-11-08 |  |  |  |  |  |  |  |  |  |  |  |
| 23 | 3.1.2.8 | 识别用户需求 | manual | 8d | 2017-11-08 | 2017-11-16 | 17 |  |  |  |  |  | 任剑超 [20%]; 史晨鑫 [20%] | 6.4h |  | 198.21 |  |
| 24 | 3.1.2.9 | 小组会议 | milestone, manual | 0d | 2017-11-09 | 2017-11-09 |  |  |  |  |  |  |  |  |  |  |  |
| 25 | 3.1.2.10 | 需求获取访谈 | manual | 4d | 2017-11-16 | 2017-11-20 | 23 |  |  |  |  |  | 汪涛 [20%]; 仲叶 [20%] | 3.2h |  | 99.1 |  |
| 26 | 3.1.2.11 | 小组会议 | milestone, manual | 0d | 2017-11-10 | 2017-11-10 |  |  |  |  |  |  |  |  |  |  |  |
| 27 | 3.1.2.12 | 举行需求获取讨论会 | manual | 2d | 2017-11-09 | 2017-11-10 | 24 |  |  |  |  |  | 邱英凡 [10%]; 任剑超 [10%]; 史晨鑫 [10%]; 汪涛 [10%]; 仲叶 [10%] | 2h |  | 61.94 |  |
| 28 | 3.1.2.13 | 小组会议 | milestone, manual | 0d | 2017-11-11 | 2017-11-11 |  |  |  |  |  |  |  |  |  |  |  |
| 29 | 3.1.2.14 | 分发调查问卷 | manual | 3d | 2017-11-09 | 2017-11-11 | 24 |  |  |  |  |  | 仲叶 [20%] | 1.2h |  | 37.16 |  |
| 30 | 3.1.2.15 | 小组会议 | milestone, manual | 0d | 2017-11-12 | 2017-11-12 |  |  |  |  |  |  |  |  |  |  |  |
| 31 | 3.1.2.16 | 分析文档 | manual | 8d | 2017-11-12 | 2017-11-19 | 29 |  |  |  |  |  | 任剑超 [20%]; 史晨鑫 [20%]; 汪涛 [20%] | 9.6h |  | 297.31 |  |
| 32 | 3.1.2.17 | 小组会议 | milestone, manual | 0d | 2017-11-13 | 2017-11-13 |  |  |  |  |  |  |  |  |  |  |  |
| 33 | 3.1.2.18 | 小组会议 | milestone, manual | 0d | 2017-11-14 | 2017-11-14 |  |  |  |  |  |  |  |  |  |  |  |
| 34 | 3.1.2.19 | 检查问题报告 | manual | 3d | 2017-11-20 | 2017-11-22 | 31 |  |  |  |  |  | 邱英凡 [20%] | 1.2h |  | 37.16 |  |
| 35 | 3.1.2.20 | 小组会议 | milestone, manual | 0d | 2017-11-15 | 2017-11-15 |  |  |  |  |  |  |  |  |  |  |  |
| 36 | 3.1.2.21 | 重用已有的需求 | manual | 4d | 2017-11-09 | 2017-11-12 | 24 |  |  |  |  |  | 邱英凡 [20%]; 任剑超 [20%] | 3.2h |  | 99.1 |  |
| 37 | 3.1.3 | 小组会议 | milestone, manual | 0d | 2017-11-23 | 2017-11-23 |  |  |  |  |  |  |  |  |  |  |  |

| ID | WBS | Task | Type | Duration | Start | Finish | Predecessors | Total slack | Constraint | Resources | Work | Cost |
| --- | --- | --- | --- | --- | --- | --- | --- | --- | --- | --- | --- | --- |
| 38 | 3.1.4 | **需求分析** |  | 18d | 2017-11-24 | 2017-12-11 |  |  |  |  | 16h | 495.52 |
| 39 | 3.1.4.1 | 小组会议 | milestone, manual | 0d | 2017-11-24 | 2017-11-24 |  |  |  |  |  |  |
| 40 | 3.1.4.2 | 应用环境建模 | manual | 2d | 2017-11-24 | 2017-11-25 | 31 |  |  | 任剑超 [25%]; 史晨鑫 [25%] | 2h | 61.94 |
| 41 | 3.1.4.3 | 小组会议 | milestone, manual | 0d | 2017-11-25 | 2017-11-25 |  |  |  |  |  |  |
| 42 | 3.1.4.4 | 创建原型 | manual | 2d | 2017-11-26 | 2017-11-27 | 31 |  |  | 史晨鑫 [25%]; 汪涛 [25%] | 2h | 61.94 |
| 43 | 3.1.4.5 | 小组会议 | milestone, manual | 0d | 2017-11-27 | 2017-11-27 |  |  |  |  |  |  |
| 44 | 3.1.4.6 | 分析实现可行性 | manual | 2d | 2017-11-28 | 2017-11-29 | 31 |  |  | 史晨鑫 [25%]; 仲叶 [25%] | 2h | 61.94 |
| 45 | 3.1.4.7 | 小组会议 | milestone, manual | 0d | 2017-11-29 | 2017-11-29 |  |  |  |  |  |  |
| 46 | 3.1.4.8 | 排列需求优先级 | manual | 1d | 2017-12-01 | 2017-12-01 | 31 |  |  | 任剑超 [25%]; 汪涛 [25%] | 1h | 30.97 |
| 47 | 3.1.4.9 | 小组会议 | milestone, manual | 0d | 2017-12-01 | 2017-12-01 |  |  |  |  |  |  |
| 48 | 3.1.4.10 | 创建数字字典 | manual | 2d | 2017-12-03 | 2017-12-04 | 46 |  |  | 邱英凡 [25%]; 任剑超 [25%] | 2h | 61.94 |
| 49 | 3.1.4.11 | 小组会议 | milestone, manual | 0d | 2017-12-04 | 2017-12-04 |  |  |  |  |  |  |
| 50 | 3.1.4.12 | 需求建模 | manual | 2d | 2017-12-05 | 2017-12-06 | 40 |  |  | 邱英凡 [25%]; 任剑超 [25%]; 仲叶 [25%] | 3h | 92.91 |
| 51 | 3.1.4.13 | 小组会议 | milestone, manual | 0d | 2017-12-06 | 2017-12-06 |  |  |  |  |  |  |
| 52 | 3.1.4.14 | 分析接口 | manual | 2d | 2017-12-07 | 2017-12-08 | 50 |  |  | 任剑超 [25%]; 史晨鑫 [25%] | 2h | 61.94 |
| 53 | 3.1.4.15 | 小组会议 | milestone, manual | 0d | 2017-12-09 | 2017-12-09 |  |  |  |  |  |  |
| 54 | 3.1.4.16 | 将需求分配到子接口 | manual | 2d | 2017-12-09 | 2017-12-10 | 52 |  |  | 汪涛 [25%]; 仲叶 [25%] | 2h | 61.94 |
| 55 | 3.1.5 | 小组会议 | milestone, manual | 0d | 2017-12-10 | 2017-12-10 |  |  |  |  |  |  |
| 56 | 3.1.6 | **规范说明** |  | 16d | 2017-12-15 | 2017-12-30 |  |  |  |  | 19h | 588.43 |
| 57 | 3.1.6.1 | 小组会议 | milestone, manual | 0d | 2017-12-15 | 2017-12-15 |  |  |  |  |  |  |
| 58 | 3.1.6.2 | 采用需求文档模板 | manual | 1d | 2017-12-15 | 2017-12-15 | 31 |  |  | 任剑超 [25%]; 汪涛 [25%]; 仲叶 [25%] | 1.5h | 46.45 |
| 59 | 3.1.6.3 | 识别需求源头 | manual | 1d | 2017-12-16 | 2017-12-16 | 42 |  |  | 邱英凡 [25%]; 仲叶 [25%]; 任剑超 [25%] | 1.5h | 46.45 |
| 60 | 3.1.6.4 | 小组会议 |  | 1d | 2017-12-16 | 2017-12-16 |  | 32d | start no earlier than 2017-12-16 |  |  |  |
| 61 | 3.1.6.5 | 为每个需求分配唯一标识 | manual | 1d | 2017-12-17 | 2017-12-17 | 59 |  |  | 邱英凡 [25%]; 史晨鑫 [25%]; 仲叶 [25%] | 1.5h | 46.45 |
| 62 | 3.1.6.6 | 记录业务规则 | manual | 1d | 2017-12-18 | 2017-12-18 |  |  |  | 任剑超 [25%]; 汪涛 [25%]; 邱英凡 [25%] | 1.5h | 46.45 |
| 63 | 3.1.6.7 | 小组会议 |  | 1d | 2017-12-19 | 2017-12-19 |  | 29d | start no earlier than 2017-12-19 |  |  |  |
| 64 | 3.1.6.8 | 描述非功能性需求 | manual | 2d | 2017-12-20 | 2017-12-21 | 59 |  |  | 史晨鑫 [25%]; 汪涛 [25%]; 邱英凡 [25%] | 3h | 92.91 |
| 65 | 3.1.6.9 | 小组会议 | manual | 1d | 2017-12-22 | 2017-12-22 |  |  |  |  |  |  |
| 66 | 3.1.6.10 | 需求功能说明书 | manual | 4d | 2017-12-03 | 2017-12-06 | 58 |  |  | 邱英凡 [25%]; 任剑超 [25%]; 史晨鑫 [25%]; 汪涛 [25%]; 仲叶 [25%] | 10h | 309.7 |
| 67 | 3.1.6.11 | 小组会议 | milestone, manual | 0d | 2017-12-08 | 2017-12-08 |  |  |  |  |  |  |
| 68 | 3.1.6.12 | 小组会议 | milestone, manual | 0d | 2017-12-09 | 2017-12-09 |  |  |  |  |  |  |
| 69 | 3.1.6.13 | 小组会议 | milestone, manual | 0d | 2017-12-10 | 2017-12-10 |  |  |  |  |  |  |

| ID | WBS | Task | Type | Duration | Start | Finish | Predecessors | Resources | Work | Cost |
| --- | --- | --- | --- | --- | --- | --- | --- | --- | --- | --- |
| 70 | 3.1.7 | **需求验证** |  | 12.5d | 2017-12-11 | 2017-12-19 |  |  | 20h | 619.4 |
| 71 | 3.1.7.1 | 小组会议 | manual | 1d | 2017-12-11 | 2017-12-11 |  |  |  |  |
| 72 | 3.1.7.2 | 评审需求 | manual | 4d | 2017-11-24 | 2017-11-27 | 58 | 任剑超 [25%]; 邱英凡 [25%] | 4h | 123.88 |
| 73 | 3.1.7.3 | 小组会议 | milestone, manual | 0d | 2017-12-12 | 2017-12-12 |  |  |  |  |
| 74 | 3.1.7.4 | 测试需求 | manual | 4d | 2017-11-24 | 2017-11-27 | 58 | 史晨鑫 [25%]; 汪涛 [25%]; 仲叶 [25%] | 6h | 185.82 |
| 75 | 3.1.7.5 | 小组会议 | milestone, manual | 0d | 2017-12-13 | 2017-12-13 |  |  |  |  |
| 76 | 3.1.7.6 | 定义验收条件 | manual | 4d | 2017-11-28 | 2017-12-01 | 72 | 邱英凡 [25%]; 任剑超 [25%] | 4h | 123.88 |
| 77 | 3.1.7.7 | 小组会议 | milestone, manual | 0d | 2017-12-14 | 2017-12-14 |  |  |  |  |
| 78 | 3.1.7.8 | 模拟需求 | manual | 4d | 2017-12-02 | 2017-12-05 | 76 | 史晨鑫 [25%]; 汪涛 [25%]; 仲叶 [25%] | 6h | 185.82 |
| 79 | 3.1.7.9 | 小组会议 | milestone, manual | 0d | 2017-12-16 | 2017-12-16 |  |  |  |  |
| 80 | 3.1.7.10 | 小组会议 | milestone, manual | 0d | 2017-12-16 | 2017-12-16 |  |  |  |  |
| 81 | 4 | **管理阶段** |  | 30.5d | 2017-12-17 | 2018-01-12 |  |  | 59.5h | 1,842.71 |
| 82 | 4.1 | 小组会议 | milestone, manual | 0d | 2017-12-17 | 2017-12-17 |  |  |  |  |
| 83 | 4.2 | **需求管理** |  | 12.5d | 2017-12-17 | 2017-12-25 |  |  | 20.5h | 634.88 |
| 84 | 4.2.1 | 建立变更控制流程 | manual | 2d | 2017-12-17 | 2017-12-18 | 58 | 邱英凡 [25%]; 汪涛 [25%]; 仲叶 [25%] | 3h | 92.91 |
| 85 | 4.2.2 | 分析变更影响 | manual | 2d | 2017-12-19 | 2017-12-20 | 84 | 任剑超 [25%]; 史晨鑫 [25%]; 仲叶 [25%] | 3h | 92.91 |
| 86 | 4.2.3 | 小组会议 | manual | 1d | 2017-12-18 | 2017-12-18 |  |  |  |  |
| 87 | 4.2.4 | 建立基线，管理需求版本 | manual | 2d | 2017-12-19 | 2017-12-20 | 58 | 任剑超 [25%]; 汪涛 [25%] | 2h | 61.94 |
| 88 | 4.2.5 | 小组会议 | manual | 1d | 2017-12-20 | 2017-12-20 |  |  |  |  |
| 89 | 4.2.6 | 维护变更历史 | manual | 2d | 2017-12-20 | 2017-12-21 | 84 | 邱英凡 [25%]; 史晨鑫 [25%]; 仲叶 [25%] | 3h | 92.91 |
| 90 | 4.2.7 | 小组会议 | milestone, manual | 0d | 2017-12-20 | 2017-12-20 |  |  |  |  |
| 91 | 4.2.8 | 跟踪需求状态 | manual | 1d | 2017-12-21 | 2017-12-21 |  | 汪涛 [25%]; 仲叶 [25%]; 邱英凡 [25%] | 1.5h | 46.45 |
| 92 | 4.2.9 | 小组会议 | milestone, manual | 0d | 2017-12-21 | 2017-12-21 |  |  |  |  |
| 93 | 4.2.10 | 跟踪需求问题 | manual | 1d | 2017-12-22 | 2017-12-22 |  | 邱英凡 [25%]; 史晨鑫 [25%]; 仲叶 [25%] | 1.5h | 46.45 |
| 94 | 4.2.11 | 小组会议 | milestone, manual | 0d | 2017-12-22 | 2017-12-22 |  |  |  |  |
| 95 | 4.2.12 | 维护需求可跟踪矩阵 | manual | 1d | 2017-12-23 | 2017-12-23 |  | 邱英凡 [25%]; 任剑超 [25%]; 史晨鑫 [25%] | 1.5h | 46.45 |
| 96 | 4.2.13 | 小组会议 | milestone, manual | 0d | 2017-12-23 | 2017-12-23 |  |  |  |  |
| 97 | 4.2.14 | 使用需求管理工具 | manual | 2d | 2017-12-24 | 2017-12-25 | 50 | 邱英凡 [25%]; 任剑超 [25%]; 史晨鑫 [25%]; 汪涛 [25%]; 仲叶 [25%] | 5h | 154.85 |
| 98 | 4.2.15 | 小组会议 | manual | 1d | 2017-12-24 | 2017-12-24 |  |  |  |  |
| 99 | 4.3 | 小组会议 | manual | 1d | 2017-12-25 | 2017-12-25 |  |  |  |  |

| ID | WBS | Task | Type | Duration | Start | Finish | Predecessors | Resources | Work | Cost |
| --- | --- | --- | --- | --- | --- | --- | --- | --- | --- | --- |
| 100 | 4.4 | **需求知识** |  | 6d | 2017-12-25 | 2017-12-30 |  |  | 9h | 278.73 |
| 101 | 4.4.1 | 培训业务分析师 | manual | 1d | 2017-12-25 | 2017-12-25 |  | 汪涛 [25%]; 仲叶 [25%] | 1h | 30.97 |
| 102 | 4.4.2 | 小组会议 | manual | 1d | 2017-12-26 | 2017-12-26 |  |  |  |  |
| 103 | 4.4.3 | 向干系人讲解需求内容 | manual | 2d | 2017-12-26 | 2017-12-27 |  | 任剑超 [25%]; 史晨鑫 [25%] | 2h | 61.94 |
| 104 | 4.4.4 | 小组会议 | manual | 1d | 2017-12-27 | 2017-12-27 |  |  |  |  |
| 105 | 4.4.5 | 向开发人员讲应用领域知识 | manual | 1d | 2017-12-27 | 2017-12-27 |  | 邱英凡 [25%] | 0.5h | 15.48 |
| 106 | 4.4.6 | 小组会议 | manual | 1d | 2017-12-28 | 2017-12-28 |  |  |  |  |
| 107 | 4.4.7 | 定义一个需求工程流程 | manual | 3d | 2017-12-26 | 2017-12-28 | 101 | 邱英凡 [25%]; 史晨鑫 [25%]; 仲叶 [25%] | 4.5h | 139.37 |
| 108 | 4.4.8 | 小组会议 | milestone, manual | 0d | 2017-12-29 | 2017-12-29 |  |  |  |  |
| 109 | 4.4.9 | 建立一个词汇表 | manual | 1d | 2017-12-29 | 2017-12-29 |  | 任剑超 [25%]; 汪涛 [25%] | 1h | 30.97 |
| 110 | 4.4.10 | 小组会议 | manual | 1d | 2017-12-30 | 2017-12-30 |  |  |  |  |
| 111 | 4.5 | **项目管理** |  | 14d | 2017-12-30 | 2018-01-12 |  |  | 30h | 929.1 |
| 112 | 4.5.1 | 选择合适的生命周期模型 | manual | 1d | 2017-12-30 | 2017-12-30 |  | 邱英凡 [25%]; 汪涛 [25%]; 仲叶 [25%] | 1.5h | 46.45 |
| 113 | 4.5.2 | 小组会议 | manual | 1d | 2017-12-31 | 2017-12-31 |  |  |  |  |
| 114 | 4.5.3 | 规划需求方案 | manual | 8d | 2017-12-29 | 2018-01-05 | 107 | 任剑超 [25%]; 史晨鑫 [25%]; 汪涛 [25%] | 12h | 371.64 |
| 115 | 4.5.4 | 小组会议 | milestone, manual | 0d | 2018-01-01 | 2018-01-01 |  |  |  |  |
| 116 | 4.5.5 | 小组会议 | milestone, manual | 0d | 2018-01-02 | 2018-01-02 |  |  |  |  |
| 117 | 4.5.6 | 小组会议 | milestone, manual | 0d | 2018-01-03 | 2018-01-03 |  |  |  |  |
| 118 | 4.5.7 | 估算需求工作量 | manual | 2d | 2018-01-06 | 2018-01-07 | 114 | 邱英凡 [25%]; 汪涛 [25%] | 2h | 61.94 |
| 119 | 4.5.8 | 小组会议 | manual | 1d | 2018-01-06 | 2018-01-06 |  |  |  |  |
| 120 | 4.5.9 | 基于需求做计划 | manual | 2d | 2018-01-06 | 2018-01-07 | 114 | 汪涛 [25%]; 仲叶 [25%] | 2h | 61.94 |
| 121 | 4.5.10 | 小组会议 | manual | 1d | 2018-01-05 | 2018-01-05 |  |  |  |  |
| 122 | 4.5.11 | 发现需求决策者 | manual | 1d | 2018-01-06 | 2018-01-06 |  | 邱英凡 [25%]; 汪涛 [25%]; 仲叶 [25%] | 1.5h | 46.45 |
| 123 | 4.5.12 | 小组会议 | manual | 1d | 2018-01-06 | 2018-01-06 |  |  |  |  |
| 124 | 4.5.13 | 小组会议 | manual | 1d | 2018-01-07 | 2018-01-07 |  |  |  |  |
| 125 | 4.5.14 | 重新协商承诺 | manual | 2d | 2018-01-07 | 2018-01-08 | 124 | 邱英凡 [25%]; 仲叶 [25%] | 2h | 61.94 |
| 126 | 4.5.15 | 小组会议 | manual | 1d | 2018-01-08 | 2018-01-08 |  |  |  |  |
| 127 | 4.5.16 | 管理需求风险 | manual | 2d | 2018-01-09 | 2018-01-10 | 114 | 邱英凡 [25%]; 仲叶 [25%] | 2h | 61.94 |
| 128 | 4.5.17 | 小组会议 | manual | 1d | 2018-01-09 | 2018-01-09 |  |  |  |  |
| 129 | 4.5.18 | 跟踪记录需求工作量 | manual | 2d | 2018-01-09 | 2018-01-10 | 128 | 任剑超 [25%]; 仲叶 [25%] | 2h | 61.94 |
| 130 | 4.5.19 | 小组会议 | manual | 1d | 2018-01-10 | 2018-01-10 |  |  |  |  |
| 131 | 4.5.20 | 小组会议 | manual | 1d | 2018-01-11 | 2018-01-11 |  |  |  |  |
| 132 | 4.5.21 | 回顾学到的经验 | manual | 1d | 2018-01-11 | 2018-01-11 | 131 | 邱英凡 [50%]; 任剑超 [50%]; 史晨鑫 [50%]; 汪涛 [50%]; 仲叶 [50%] | 5h | 154.85 |
| 133 | 4.5.22 | 小组会议 | milestone, manual | 0d | 2018-01-12 | 2018-01-12 |  |  |  |  |

| ID | WBS | Task | Type | Duration | Start | Finish | Predecessors | Resources | Work | Cost |
| --- | --- | --- | --- | --- | --- | --- | --- | --- | --- | --- |
| 134 | 5 | **收尾阶段** |  | 9.5d | 2018-01-12 | 2018-01-17 |  |  | 40h | 1,238.8 |
| 135 | 5.1 | 小组会议 | milestone, manual | 0d | 2018-01-13 | 2018-01-13 |  |  |  |  |
| 136 | 5.2 | 小组会议 | milestone, manual | 0d | 2018-01-14 | 2018-01-14 |  |  |  |  |
| 137 | 5.3 | 各文档检查 | manual | 4d | 2018-01-12 | 2018-01-15 | 132 | 邱英凡 [50%]; 任剑超 [50%]; 史晨鑫 [50%]; 汪涛 [50%]; 仲叶 [50%] | 20h | 619.4 |
| 138 | 5.4 | 小组会议 | milestone, manual | 0d | 2018-01-15 | 2018-01-15 |  |  |  |  |
| 139 | 5.5 | 小组会议 | milestone, manual | 0d | 2018-01-16 | 2018-01-16 |  |  |  |  |
| 140 | 5.6 | 整理文档 | manual | 2d | 2018-01-16 | 2018-01-17 | 137 | 邱英凡; 任剑超; 史晨鑫; 汪涛; 仲叶 | 20h | 619.4 |
